# ProjetFooting

Schedule from MS Project, 2012-10-23 to 2013-06-13, costs in €.
INERGY Automotive Systems

## Calendars

- Standard: Mon-Fri 09:00-12:00, 14:00-18:00; Sat-Sun off.

## Resources

| Resource | Rate |
| --- | --- |
| Cronier Antoine | 15 |
| Bontemps Quentin | 15 |
| Mahé Kilian | 15 |
| CA+BQ+MK | 45 |
| client |  |

## Schedule

| ID | WBS | Task | Type | Duration | Start | Finish | Predecessors | Total slack | Resources | Work | Cost |
| --- | --- | --- | --- | --- | --- | --- | --- | --- | --- | --- | --- |
| 1 | 1 | **Projet Footing** |  | 147d? | 2012-10-23 | 2013-06-13 |  | 0d |  | 1224h | 34,440 |
| 2 | 1.1 | **Mise en marche du projet** |  | 14d? | 2012-10-23 | 2012-11-13 |  | 0d |  | 112h | 1,560 |
| 3 | 1.1.1 | Concevoir le cahier des charges |  | 2d? | 2012-10-23 | 2012-10-25 |  | 0d | Cronier Antoine | 16h | 240 |
| 4 | 1.1.2 | Plan de management |  | 6d | 2012-10-25 | 2012-11-05 | 3 | 0d | Cronier Antoine | 48h | 720 |
| 5 | 1.1.3 | Création du planning |  | 3d? | 2012-11-05 | 2012-11-08 | 4 | 0d | Cronier Antoine | 24h | 360 |
| 6 | 1.1.4 | Lettres de missions |  | 1d? | 2012-11-08 | 2012-11-09 | 5 | 0d | Mahé Kilian | 8h | 120 |
| 7 | 1.1.5 | Validation interne | milestone | 0d | 2012-11-09 | 2012-11-09 | 6 | 0d | CA+BQ+MK |  |  |
| 8 | 1.1.6 | Validation Cahier Des Charges |  | 1d? | 2012-11-09 | 2012-11-12 | 7 | 0d | client | 8h |  |
| 9 | 1.1.7 | Création de compte rendu |  | 1d? | 2012-11-12 | 2012-11-13 | 8 | 0d | Bontemps Quentin | 8h | 120 |
| 10 | 1.2 | **Dossier de spécifications fonctionnelles** |  | 13d? | 2012-11-14 | 2012-12-04 | 2 | 0d |  | 200h | 2,880 |
| 11 | 1.2.1 | **Fonctions d’enregistrement des données** |  | 2d | 2012-11-14 | 2012-11-16 |  | 0d |  | 96h | 1,440 |
| 12 | 1.2.1.1 | Enregistrement des temps à chaque tour. |  | 2d | 2012-11-14 | 2012-11-16 |  | 0d | Cronier Antoine | 16h | 240 |
| 13 | 1.2.1.2 | Enregistrement de la distance |  | 2d | 2012-11-14 | 2012-11-16 |  | 0d | Cronier Antoine | 16h | 240 |
| 14 | 1.2.1.3 | Enregistrement du temps toutes les 5 mins et faire la moyenne de la vitesse sur ce temps |  | 2d | 2012-11-14 | 2012-11-16 |  | 0d | Cronier Antoine | 16h | 240 |
| 15 | 1.2.1.4 | Enregistrement et visualisation du circuit |  | 2d | 2012-11-14 | 2012-11-16 |  | 0d | Cronier Antoine | 16h | 240 |
| 16 | 1.2.1.5 | Enregistrement et visualisation du parcours |  | 2d | 2012-11-14 | 2012-11-16 |  | 0d | Cronier Antoine | 16h | 240 |
| 17 | 1.2.1.6 | Enregistrement de la moyenne au km |  | 2d | 2012-11-14 | 2012-11-16 |  | 0d | Cronier Antoine | 16h | 240 |
| 18 | 1.2.2 | Moyenne globale de la course |  | 1d | 2012-11-16 | 2012-11-19 | 11 | 0d | Cronier Antoine | 8h | 120 |
| 19 | 1.2.3 | Moyenne intermédiaire par tour |  | 1d? | 2012-11-19 | 2012-11-20 | 18 | 0d | Cronier Antoine | 8h | 120 |
| 20 | 1.2.4 | Fonction création de statistique |  | 2d | 2012-11-20 | 2012-11-22 | 19 | 0d | Cronier Antoine | 16h | 240 |
| 21 | 1.2.5 | Fonction de listage des données |  | 2d | 2012-11-19 | 2012-11-21 | 18 | 1d | Cronier Antoine | 16h | 240 |
| 22 | 1.2.6 | Fonction de résumé des données |  | 2d | 2012-11-22 | 2012-11-27 | 20, 21 | 0d | Cronier Antoine | 16h | 240 |
| 23 | 1.2.7 | Maquetage de l’application (Iphone/WindowsPhone) |  | 1d? | 2012-11-27 | 2012-11-28 | 22 | 0d | Cronier Antoine | 8h | 120 |
| 24 | 1.2.8 | validation interne | milestone | 0d | 2012-11-28 | 2012-11-28 | 23 | 0d | CA+BQ+MK |  |  |
| 25 | 1.2.9 | Validation ergonomie |  | 1d? | 2012-11-28 | 2012-11-29 | 24 | 0d | client | 8h |  |
| 26 | 1.2.10 | Fiche budget |  | 2d | 2012-11-29 | 2012-12-03 | 25 | 0d | Cronier Antoine | 16h | 240 |
| 27 | 1.2.11 | Création de compte rendu |  | 1d? | 2012-12-03 | 2012-12-04 | 26 | 0d | Bontemps Quentin | 8h | 120 |

| ID | WBS | Task | Type | Duration | Start | Finish | Predecessors | Total slack | Free slack | Resources | Work | Cost |
| --- | --- | --- | --- | --- | --- | --- | --- | --- | --- | --- | --- | --- |
| 28 | 1.3 | **Dossier de spécifications techniques** |  | 26d? | 2012-12-04 | 2013-01-15 | 10 | 0d |  |  | 328h | 7,080 |
| 29 | 1.3.1 | **Fonctions d’enregistrement des données** |  | 4d? | 2012-12-04 | 2012-12-11 |  | 0d |  |  | 120h | 1,800 |
| 30 | 1.3.1.1 | Enregistrement des temps à chaque tour. |  | 2d | 2012-12-04 | 2012-12-07 |  | 2d |  | Bontemps Quentin | 16h | 240 |
| 31 | 1.3.1.2 | Enregistrement de la distance |  | 2d | 2012-12-04 | 2012-12-07 |  | 2d |  | Bontemps Quentin | 16h | 240 |
| 32 | 1.3.1.3 | Enregistrement et visualisation du circuit |  | 2d | 2012-12-04 | 2012-12-07 |  | 2d |  | Mahé Kilian | 16h | 240 |
| 33 | 1.3.1.4 | Enregistrement du temps toutes les 5 mins et faire la moyenne de la vitesse sur ce temps |  | 4d | 2012-12-04 | 2012-12-11 |  | 0d |  | Bontemps Quentin | 32h | 480 |
| 34 | 1.3.1.5 | Enregistrement et visualisation du parcours |  | 4d | 2012-12-04 | 2012-12-11 |  | 0d |  | Mahé Kilian | 32h | 480 |
| 35 | 1.3.1.6 | Enregistrement de la moyenne au km |  | 1d? | 2012-12-04 | 2012-12-05 |  | 3d |  | Bontemps Quentin | 8h | 120 |
| 36 | 1.3.2 | Moyenne globale de la course |  | 1d? | 2012-12-04 | 2012-12-05 |  | 25d |  | Bontemps Quentin | 8h | 120 |
| 37 | 1.3.3 | Moyenne globale par tour |  | 1d? | 2012-12-11 | 2012-12-12 | 29 | 0d |  | Bontemps Quentin | 8h | 120 |
| 38 | 1.3.4 | Fonction création de statistique |  | 3d | 2012-12-12 | 2012-12-17 | 37 | 0d |  | Cronier Antoine | 24h | 360 |
| 39 | 1.3.5 | Fonction de listage des données |  | 3d | 2012-12-12 | 2012-12-17 | 37 | 0d |  | Cronier Antoine | 24h | 360 |
| 40 | 1.3.6 | Fonction de résumé des données |  | 3d | 2012-12-18 | 2012-12-21 | 38, 39 | 0d |  | Cronier Antoine | 24h | 360 |
| 41 | 1.3.7 | Conception préversion |  | 10d | 2012-12-21 | 2013-01-07 | 40 | 0d |  | CA+BQ+MK | 80h | 3,600 |
| 42 | 1.3.8 | validation interne | milestone | 0d | 2013-01-07 | 2013-01-07 | 41 | 0d |  | CA+BQ+MK |  |  |
| 43 | 1.3.9 | Validation préversion |  | 2d | 2013-01-07 | 2013-01-10 | 42 | 0d |  | client | 16h |  |
| 44 | 1.3.10 | Fiche budget MAJ |  | 2d | 2013-01-10 | 2013-01-14 | 43 | 0d |  | Cronier Antoine | 16h | 240 |
| 45 | 1.3.11 | Création de compte rendu |  | 1d? | 2013-01-14 | 2013-01-15 | 44 | 0d |  | Bontemps Quentin | 8h | 120 |
| 46 | 1.4 | **Dossier communautaire (Optionnel)** |  | 14d? | 2013-01-15 | 2013-02-06 | 28 | 80d |  |  |  |  |
| 47 | 1.4.1 | **Dossier fonctionnel communautaire** |  | 4d? | 2013-01-15 | 2013-01-22 |  | 80d | 0d |  |  |  |
| 48 | 1.4.1.1 | Enregistrement des données communautaire |  | 3d | 2013-01-15 | 2013-01-18 |  | 80d | 0d |  |  |  |
| 49 | 1.4.1.2 | Partage des informations communautaire |  | 3d | 2013-01-15 | 2013-01-18 |  | 80d | 0d |  |  |  |
| 50 | 1.4.1.3 | Schéma de fonctionnement |  | 1d? | 2013-01-21 | 2013-01-22 | 48, 49 | 80d | 0d |  |  |  |
| 51 | 1.4.1.4 | validation interne | milestone | 0d | 2013-01-22 | 2013-01-22 | 50 | 80d |  |  |  |  |

| ID | WBS | Task | Type | Duration | Start | Finish | Predecessors | Total slack | Free slack | Resources | Work | Cost |
| --- | --- | --- | --- | --- | --- | --- | --- | --- | --- | --- | --- | --- |
| 52 | 1.4.2 | **Développement aspect communautaire** |  | 10d | 2013-01-22 | 2013-02-06 | 47 | 80d |  |  |  |  |
| 53 | 1.4.2.1 | **Ami** |  | 5d | 2013-01-22 | 2013-01-29 |  | 80d | 0d |  |  |  |
| 54 | 1.4.2.1.1 | Parcour |  | 5d | 2013-01-22 | 2013-01-29 |  | 80d |  |  |  |  |
| 55 | 1.4.2.1.2 | Score |  | 2d | 2013-01-22 | 2013-01-24 |  | 83d |  |  |  |  |
| 56 | 1.4.2.1.3 | Progression |  | 5d | 2013-01-22 | 2013-01-29 |  | 80d |  |  |  |  |
| 57 | 1.4.2.2 | **Partager** |  | 2d | 2013-01-22 | 2013-01-24 |  | 83d | 3d |  |  |  |
| 58 | 1.4.2.2.1 | Parcour |  | 2d | 2013-01-22 | 2013-01-24 |  | 83d |  |  |  |  |
| 59 | 1.4.2.2.2 | Score |  | 2d | 2013-01-22 | 2013-01-24 |  | 83d |  |  |  |  |
| 60 | 1.4.2.2.3 | Progression |  | 2d | 2013-01-22 | 2013-01-24 |  | 83d |  |  |  |  |
| 61 | 1.4.2.3 | Mise en place serveur communautaire |  | 3d | 2013-01-22 | 2013-01-25 |  | 82d | 2d |  |  |  |
| 62 | 1.4.2.4 | Test communautaire |  | 5d | 2013-01-29 | 2013-02-06 | 53, 57, 61 | 80d | 0d |  |  |  |
| 63 | 1.4.2.5 | validation interne | milestone | 0d | 2013-02-06 | 2013-02-06 | 62 | 80d |  |  |  |  |
| 64 | 1.5 | **Réalisation application** |  | 73d? | 2013-01-15 | 2013-05-10 | 28 | 0d |  |  | 496h | 19,560 |
| 65 | 1.5.1 | Programmation |  | 43d | 2013-01-15 | 2013-03-25 |  | 0d |  | CA+BQ+MK | 344h | 15,480 |
| 66 | 1.5.2 | validation interne | milestone | 0d | 2013-03-25 | 2013-03-25 | 65 | 0d |  | CA+BQ+MK |  |  |
| 67 | 1.5.3 | **Tests application** |  | 10d | 2013-03-25 | 2013-04-10 | 66 | 0d |  |  | 80h | 3,600 |
| 68 | 1.5.3.1 | Tests contrôle d’erreur |  | 5d | 2013-03-25 | 2013-04-02 |  | 0d |  | CA+BQ+MK | 40h | 1,800 |
| 69 | 1.5.3.2 | Tests saisis |  | 5d | 2013-04-02 | 2013-04-10 | 68 | 0d |  | CA+BQ+MK | 40h | 1,800 |
| 70 | 1.5.4 | **Dossier de validation** |  | 5d | 2013-04-10 | 2013-04-17 | 67 | 0d |  |  |  |  |
| 71 | 1.5.4.1 | Validation à pied |  | 5d | 2013-04-10 | 2013-04-17 |  | 0d |  |  |  |  |
| 72 | 1.5.4.2 | Validation en vélo |  | 5d | 2013-04-10 | 2013-04-17 |  | 0d |  |  |  |  |
| 73 | 1.5.5 | Tests utilisateurs |  | 7d | 2013-04-17 | 2013-04-29 | 70 | 0d |  | client | 56h |  |
| 74 | 1.5.6 | Rapport de test (pour/avec le client) |  | 1d? | 2013-04-29 | 2013-04-30 | 73 | 0d |  | CA+BQ+MK | 8h | 360 |
| 75 | 1.5.7 | Création de compte rendu |  | 1d? | 2013-05-01 | 2013-05-02 | 74 | 0d |  | Bontemps Quentin | 8h | 120 |
| 76 | 1.5.8 | Mise en ligne des applications |  | 6d | 2013-05-02 | 2013-05-10 | 75 | 0d |  |  |  |  |
| 77 | 1.5.9 | validation interne | milestone | 0d | 2013-05-10 | 2013-05-10 | 76 | 0d |  | CA+BQ+MK |  |  |

| ID | WBS | Task | Type | Duration | Start | Finish | Predecessors | Total slack | Resources | Work | Cost |
| --- | --- | --- | --- | --- | --- | --- | --- | --- | --- | --- | --- |
| 78 | 1.6 | **Dossier d’utilisation** |  | 14d | 2013-05-13 | 2013-06-03 | 64 | 0d |  | 32h | 1,440 |
| 79 | 1.6.1 | Création fichier PDF utilisation |  | 4d | 2013-05-13 | 2013-05-17 |  | 0d | CA+BQ+MK | 32h | 1,440 |
| 80 | 1.6.2 | Création tutoriel intéractif (Optionnel) |  | 10d | 2013-05-17 | 2013-06-03 | 79 | 0d |  |  |  |
| 81 | 1.6.3 | validation interne | milestone | 0d | 2013-06-03 | 2013-06-03 | 80 | 0d | CA+BQ+MK |  |  |
| 82 | 1.7 | Validation du projet |  | 1d? | 2013-06-04 | 2013-06-05 | 78 | 0d | client | 8h |  |
| 83 | 1.8 | Création de compte rendu |  | 1d? | 2013-06-05 | 2013-06-06 | 82 | 0d | Bontemps Quentin | 8h | 120 |
| 84 | 1.9 | Livraison |  | 5d | 2013-06-06 | 2013-06-13 | 83 | 0d | CA+BQ+MK | 40h | 1,800 |
